# 计划汇总 - 副本

Schedule from MS Project, 2014-07-09 to 2017-06-28, A marks actual dates.

## Calendars

- 标准: Mon-Fri 08:00-12:00, 13:00-17:00; Sat-Sun off.

## Resources

| Resource |
| --- |
| 陈伟明 |
| 陈激涛 |
| 邝云生 |
| 郭伟田 |
| 代招 |
| 新招1 |
| 新招2 |
| 郭伟田/新招1 |
| 新招2/郭斌 |
| 新招 |
| 郭斌 |
| 新招3 |
| 郭伟田/新招2 |
| 郭伟田+新招1 |
| 待定 |
| 李奎 |
| 徐浩 |
| 江三林 |
| 李人凤 |
| 郭彬 |
| 罗宬 |
| 钟会 |
| 谢培辉 |
| 姚勇 |
| 毛光江 |
| 谢陪辉 |
| 徐进亮 |
| 张亮 |
| 苏文军 |
| 总部研发部 |
| 总部研发 |
| 赵睿 |
| 王磊 |
| 魏斯琦 |
| 张家乐 |
| 张源 |
| 刘炜炜 |
| 白章顺 |
| 王亚雷 |
| 张亚辉 |
| 苏南 |
| 赵春海 |
| 牛旭 |

## Schedule

| ID | WBS | Task | Duration | Start | Finish | Predecessors | Complete | Remaining | Total slack | Constraint | Resources | Work | Actual work |
| --- | --- | --- | --- | --- | --- | --- | --- | --- | --- | --- | --- | --- | --- |
| 1 | 1 | **上海一体化项目开发计划** | 776d? | 2014-07-09 A | 2017-06-28 |  | 16% | 654.71d? | 0d |  |  | 984h | 304h |
| 2 | 1.1 | 需求梳理和项目设计 | 16d? | 2017-02-07 A | 2017-02-28 A |  | 100% |  |  | start no earlier than 2015-03-16 |  |  |  |
| 3 | 1.2 | 系统技术架构设计 | 15d? | 2017-01-16 A | 2017-02-03 A |  | 100% |  |  | start no earlier than 2017-02-08 |  |  |  |
| 4 | 1.3 | **一体化内网门户** | 60d? | 2017-02-08 A | 2017-05-02 |  | 35% | 39.14d? | 41d |  |  | 936h | 304h |
| 5 | 1.3.1 | **门户展示——常用功能** | 41d? | 2017-02-08 A | 2017-04-05 |  |  | 41d? | 60d |  |  | 56h |  |
| 6 | 1.3.1.1 | 短信 | 2d? | 2017-02-08 A | 2017-02-09 |  |  | 2d? | 99d |  | 姚勇 | 16h |  |
| 7 | 1.3.1.2 | 通信录 | 2d? | 2017-02-09 A | 2017-02-10 |  |  | 2d? | 98d |  | 姚勇 | 16h |  |
| 8 | 1.3.1.3 | 邮件 | 3d? | 2017-04-03 | 2017-04-05 |  |  |  | 60d | start no earlier than 2017-04-03 | 姚勇 | 24h |  |
| 9 | 1.3.2 | 门户展示——用户登录、注销、信息展示 | 1d? | 2017-02-08 A | 2017-02-08 |  |  | 1d? | 100d |  | 张源 | 8h |  |
| 10 | 1.3.3 | 组织机构 | 3d? | 2017-02-09 A | 2017-02-13 A |  | 100% |  |  | start no earlier than 2017-02-13 | 张源 | 24h | 24h |
| 11 | 1.3.4 | 用户管理 | 3d? | 2017-02-16 A | 2017-02-20 A | 10 | 100% |  |  |  | 张源 | 24h | 24h |
| 12 | 1.3.5 | 角色管理 | 3d? | 2017-02-21 A | 2017-02-23 A | 11 | 100% |  |  |  | 张源 | 24h | 24h |
| 13 | 1.3.6 | 权限管理 | 3d? | 2017-02-24 A | 2017-02-28 A | 12 | 100% |  |  |  | 张源 | 24h | 24h |
| 14 | 1.3.7 | 日程管理 | 1d? | 2017-03-01 A | 2017-03-01 | 13 |  | 1d? | 85d |  | 姚勇 | 8h |  |
| 15 | 1.3.8 | 统一身份认证 | 5d? | 2017-03-02 A | 2017-03-08 A | 14 | 100% |  |  |  | 张源 | 40h | 40h |
| 16 | 1.3.9 | 全文检索 | 10d? | 2017-03-16 A | 2017-03-29 |  | 50% | 5d? | 65d |  | 姚勇 | 80h | 40h |
| 17 | 1.3.10 | **待办中心** | 30d? | 2017-02-20 A | 2017-03-31 |  | 58% | 12.5d? | 63d |  |  | 96h | 56h |
| 18 | 1.3.10.1 | 业务待办 | 7d? | 2017-02-20 A | 2017-02-28 A |  | 100% |  |  | finish no earlier than 2017-02-28 | 姚勇 | 56h | 56h |
| 19 | 1.3.10.2 | 办公待办 | 5d? | 2017-03-27 | 2017-03-31 |  |  |  | 47d | start no earlier than 2017-03-27 | 姚勇 | 40h |  |
| 20 | 1.3.11 | 门户展示——通知公告 | 1d? | 2017-03-01 A | 2017-03-01 A |  | 100% |  |  |  | 张源 | 8h | 8h |
| 21 | 1.3.12 | 门户展示——通知公告 | 1d? | 2017-03-01 A | 2017-03-02 A |  | 100% |  |  |  | 张源 | 8h | 8h |
| 22 | 1.3.13 | 门户展示——我的桌面 | 1d? | 2017-03-01 A | 2017-03-01 A |  | 100% |  |  |  | 姚勇 | 8h | 8h |
| 23 | 1.3.14 | 门户展示——系统首页的栏目展示 | 1d? | 2017-03-01 A | 2017-03-01 A |  | 100% |  |  |  | 张源 | 8h | 8h |
| 24 | 1.3.15 | 门户展示——业务提醒 | 1d? | 2017-03-01 A | 2017-03-01 A |  | 100% |  |  |  | 姚勇 | 8h | 8h |

| ID | WBS | Task | Duration | Start | Finish | Predecessors | Complete | Remaining | Total slack | Free slack | Constraint | Resources | Work | Actual work |
| --- | --- | --- | --- | --- | --- | --- | --- | --- | --- | --- | --- | --- | --- | --- |
| 25 | 1.3.16 | **门户展示——内容管理** | 25d? | 2017-03-01 A | 2017-04-04 |  | 9% | 22.69d? | 61d |  |  |  | 192h | 32h |
| 26 | 1.3.16.1 | 站点群管理 | 1d? | 2017-03-01 A | 2017-03-01 A |  | 100% |  |  |  |  | 张源 | 8h | 8h |
| 27 | 1.3.16.2 | 栏目管理 | 1d? | 2017-03-01 A | 2017-03-01 A |  | 100% |  |  |  |  | 张源; 姚勇 | 16h | 16h |
| 28 | 1.3.16.3 | 内网发布管理 | 1d? | 2017-03-01 A | 2017-03-01 |  | 50% | 0.5d? | 61d | 0d |  | 姚勇; 张源 | 16h | 8h |
| 29 | 1.3.16.4 | 日程安排 | 2d? | 2017-03-02 | 2017-03-03 | 28 |  |  | 45d | 0d |  | 姚勇 | 16h |  |
| 30 | 1.3.16.5 | 外网发布管理 | 5d? | 2017-03-06 | 2017-03-10 | 29 |  |  | 45d | 0d | start no earlier than 2017-03-06 |  |  |  |
| 31 | 1.3.16.6 | 模板管理 | 5d? | 2017-03-13 | 2017-03-17 | 30 |  |  | 45d | 0d |  | 姚勇 | 40h |  |
| 32 | 1.3.16.7 | 内容审批 | 5d? | 2017-03-20 | 2017-03-24 | 31 |  |  | 45d | 0d |  | 姚勇 | 40h |  |
| 33 | 1.3.16.8 | 内容分类管理 | 5d? | 2017-03-27 | 2017-03-31 | 32 |  |  | 45d | 0d |  | 姚勇 | 40h |  |
| 34 | 1.3.16.9 | 日志管理 | 2d? | 2017-04-03 | 2017-04-04 | 33 |  |  | 45d |  |  | 姚勇 | 16h |  |
| 35 | 1.3.17 | 电子印章管理 | 3d? | 2017-04-03 | 2017-04-05 |  |  |  | 46d | 0d | start no earlier than 2017-04-03 | 张源; 姚勇 | 48h |  |
| 36 | 1.3.18 | 文档加盖签章 | 4d? | 2017-04-06 | 2017-04-11 | 35 |  |  | 46d | 0d |  | 张源; 姚勇 | 64h |  |
| 37 | 1.3.19 | 单点登录 | 5d? | 2017-04-12 | 2017-04-18 | 36 |  |  | 46d | 0d |  | 张源; 姚勇 | 80h |  |
| 38 | 1.3.20 | 签章验证 | 5d? | 2017-04-19 | 2017-04-25 | 37 |  |  | 46d |  |  | 张源; 姚勇 | 80h |  |
| 39 | 1.3.21 | 工作区网盘 | 5d? | 2017-04-24 | 2017-04-28 |  |  |  | 41d | 0d | start no earlier than 2017-04-24 | 张源 | 40h |  |
| 40 | 1.3.22 | **新增用户管理(受理中心)** | 2d? | 2017-05-01 | 2017-05-02 |  |  |  | 41d |  |  |  |  |  |
| 41 | 1.3.22.1 | 新增用户 | 1d? | 2017-05-01 | 2017-05-01 | 39 |  |  | 41d | 0d |  |  |  |  |
| 42 | 1.3.22.2 | 用户信息查询、修改和验证 | 1d? | 2017-05-02 | 2017-05-02 | 41 |  |  | 41d |  |  |  |  |  |
| 43 | 1.3.23 | 完成一体化门户开发 | 1d? | 2017-04-28 | 2017-04-28 |  |  |  | 43d |  | start no earlier than 2017-04-28 | 姚勇 | 8h |  |
| 44 | 1.4 | **公共信息服务** | 83d? | 2017-01-04 A | 2017-04-28 |  | 45% | 45.41d? | 43d |  |  |  | 8h |  |
| 45 | 1.4.1 | **公共信息服务首页** | 71d? | 2017-01-04 A | 2017-04-12 |  | 90% | 6.76d? | 55d |  |  |  |  |  |
| 46 | 1.4.1.1 | 新闻展示 | 4d? | 2017-01-04 A | 2017-01-09 A |  | 100% |  |  |  | start no earlier than 2017-02-08 |  |  |  |
| 47 | 1.4.1.2 | 用户注册、登录、登出、密码修改 | 3d? | 2017-01-09 A | 2017-01-11 A | 46 | 100% |  |  |  |  |  |  |  |
| 48 | 1.4.1.3 | 系统链接 | 3d? | 2017-01-16 A | 2017-01-18 A | 47 | 100% |  |  |  |  |  |  |  |
| 49 | 1.4.1.4 | 资料公告 | 2d? | 2017-01-19 A | 2017-01-20 A | 48 | 100% |  |  |  |  |  |  |  |
| 50 | 1.4.1.5 | 信息公示 | 3d? | 2017-02-08 A | 2017-02-10 A | 49 | 100% |  |  |  |  |  |  |  |
| 51 | 1.4.1.6 | 法律法规 | 2d? | 2017-02-13 A | 2017-02-14 A | 50 | 100% |  |  |  |  |  |  |  |
| 52 | 1.4.1.7 | 信息检索 | 2d? | 2017-04-11 | 2017-04-12 | 75 |  |  | 55d |  | start no earlier than 2017-04-10 |  |  |  |
| 53 | 1.4.1.8 | 个人资料查看与修改 | 2d? | 2017-01-12 A | 2017-01-13 A |  | 100% |  |  |  | start no earlier than 2017-01-12 |  |  |  |

| ID | WBS | Task | Duration | Start | Finish | Predecessors | Complete | Remaining | Total slack | Free slack | Constraint | Resources | Work |
| --- | --- | --- | --- | --- | --- | --- | --- | --- | --- | --- | --- | --- | --- |
| 54 | 1.4.2 | **网上受理** | 19d? | 2017-02-28 A | 2017-03-24 |  | 26% | 14d? | 55d |  |  |  |  |
| 55 | 1.4.2.1 | 频率申请新办 | 4d? | 2017-02-28 A | 2017-03-03 A |  | 100% |  |  |  | start no earlier than 2017-02-28 |  |  |
| 56 | 1.4.2.2 | 无线电台站设置新办 | 1d? | 2017-03-06 A | 2017-03-06 A | 55 | 100% |  |  |  |  |  |  |
| 57 | 1.4.2.3 | 频率申请延续 | 1d? | 2017-03-07 | 2017-03-07 | 56 |  |  | 55d | 0d |  |  |  |
| 58 | 1.4.2.4 | 频率注销 | 1d? | 2017-03-08 | 2017-03-08 | 57 |  |  | 55d | 0d |  |  |  |
| 59 | 1.4.2.5 | 操作日志记录与管理 | 3d? | 2017-03-09 | 2017-03-13 | 58 |  |  | 55d | 0d |  |  |  |
| 60 | 1.4.2.6 | 无线电台站设置延续 | 1d? | 2017-03-14 | 2017-03-14 | 59 |  |  | 55d | 0d |  |  |  |
| 61 | 1.4.2.7 | 无线电台站注销 | 1d? | 2017-03-15 | 2017-03-15 | 60 |  |  | 55d | 0d |  |  |  |
| 62 | 1.4.2.8 | 业务电台呼号审批 | 2d? | 2017-03-16 | 2017-03-17 | 61 |  |  | 55d | 0d |  |  |  |
| 63 | 1.4.2.9 | 船舶呼号审批 | 1d? | 2017-03-20 | 2017-03-20 | 62 |  |  | 55d | 0d |  |  |  |
| 64 | 1.4.2.10 | 无线电发射设备进关核准审批 | 2d? | 2017-03-21 | 2017-03-22 | 63 |  |  | 55d | 0d |  |  |  |
| 65 | 1.4.2.11 | 业务流程处理结果状态管理 | 2d? | 2017-03-23 | 2017-03-24 | 64 |  |  | 55d | 0d |  |  |  |
| 66 | 1.4.3 | 无线电业务数据内外网交互服务 | 3d? | 2017-03-27 | 2017-03-29 | 65 |  |  | 55d | 0d |  |  |  |
| 67 | 1.4.4 | 站内通知 | 2d? | 2017-03-30 | 2017-03-31 | 66 |  |  | 55d | 0d |  |  |  |
| 68 | 1.4.5 | **政民互动** | 5d? | 2017-04-03 | 2017-04-07 |  |  |  | 55d |  |  |  |  |
| 69 | 1.4.5.1 | 在线咨询 | 1d? | 2017-04-03 | 2017-04-03 | 67 |  |  | 55d | 0d |  |  |  |
| 70 | 1.4.5.2 | 用户投诉 | 1d? | 2017-04-04 | 2017-04-04 | 69 |  |  | 55d | 0d |  |  |  |
| 71 | 1.4.5.3 | 用户建议 | 1d? | 2017-04-05 | 2017-04-05 | 70 |  |  | 55d | 0d |  |  |  |
| 72 | 1.4.5.4 | 局长信箱 | 1d? | 2017-04-06 | 2017-04-06 | 71 |  |  | 55d | 0d |  |  |  |
| 73 | 1.4.5.5 | 我的回信 | 1d? | 2017-04-07 | 2017-04-07 | 72 |  |  | 55d | 0d |  |  |  |
| 74 | 1.4.6 | **系统管理(内网处理)** | 2d? | 2017-04-10 | 2017-04-11 |  |  |  | 55d |  |  |  |  |
| 75 | 1.4.6.1 | 用户管理 | 1d? | 2017-04-10 | 2017-04-10 | 73 |  |  | 55d | 0d |  |  |  |
| 76 | 1.4.6.2 | 用户审核 | 1d? | 2017-04-11 | 2017-04-11 | 75 |  |  | 56d |  |  |  |  |
| 77 | 1.4.7 | 完成公共信息服务系统开发 | 1d? | 2017-04-28 | 2017-04-28 |  |  |  | 43d |  | start no earlier than 2017-04-28 | 张家乐 | 8h |

| ID | WBS | Task | Duration | Start | Finish | Predecessors | Complete | Remaining | Total slack | Free slack | Constraint |
| --- | --- | --- | --- | --- | --- | --- | --- | --- | --- | --- | --- |
| 78 | 1.5 | **核心业务系统** | 85d? | 2017-02-08 A | 2017-06-06 |  | 5% | 80.69d? | 16d | 0d |  |
| 79 | 1.5.1 | **行政审批受理及BPMS前端开发** | 72d? | 2017-02-27 | 2017-06-06 |  |  |  | 16d |  |  |
| 80 | 1.5.1.1 | 频率申请新办 | 3d? | 2017-02-27 | 2017-03-01 |  |  |  | 56d | 0d | start no earlier than 2017-02-27 |
| 81 | 1.5.1.2 | 频率申请延续 | 2d? | 2017-03-02 | 2017-03-03 | 80 |  |  | 56d | 0d |  |
| 82 | 1.5.1.3 | 频率申请注销 | 2d? | 2017-03-06 | 2017-03-07 | 81 |  |  | 56d | 0d |  |
| 83 | 1.5.1.4 | 无线电呼号审批 | 2d? | 2017-03-08 | 2017-03-09 | 82 |  |  | 56d | 0d |  |
| 84 | 1.5.1.5 | 无线电台站设置新办 | 3d? | 2017-03-10 | 2017-03-14 | 83 |  |  | 56d | 0d |  |
| 85 | 1.5.1.6 | 无线电台站设置延续 | 2d? | 2017-03-15 | 2017-03-16 | 84 |  |  | 56d | 0d |  |
| 86 | 1.5.1.7 | 无线电台站注销 | 2d? | 2017-03-17 | 2017-03-20 | 85 |  |  | 56d | 0d |  |
| 87 | 1.5.1.8 | 工作流开发培训 | 3d? | 2017-03-21 | 2017-03-23 | 86 |  |  | 56d | 0d |  |
| 88 | 1.5.1.9 | 业务表单管理 | 2d? | 2017-03-24 | 2017-03-27 | 87 |  |  | 56d | 0d |  |
| 89 | 1.5.1.10 | 缴费受理 | 2d? | 2017-03-28 | 2017-03-29 | 88 |  |  | 56d | 0d |  |
| 90 | 1.5.1.11 | 信访受理 | 2d? | 2017-03-30 | 2017-03-31 | 89 |  |  | 56d | 0d |  |
| 91 | 1.5.1.12 | 咨询服务受理 | 2d? | 2017-04-03 | 2017-04-04 | 90 |  |  | 56d | 0d |  |
| 92 | 1.5.1.13 | 技术服务受理 | 2d? | 2017-04-05 | 2017-04-06 | 91 |  |  | 56d | 0d |  |
| 93 | 1.5.1.14 | 业务查询 | 3d? | 2017-04-07 | 2017-04-11 | 92 |  |  | 56d |  |  |
| 94 | 1.5.1.15 | 双公示 | 3d? | 2017-05-15 | 2017-05-17 |  |  |  | 16d | 0d | start no earlier than 2017-05-15 |
| 95 | 1.5.1.16 | 三清单 | 3d? | 2017-05-18 | 2017-05-22 | 94 |  |  | 16d | 0d |  |
| 96 | 1.5.1.17 | 法人库 | 3d? | 2017-05-23 | 2017-05-25 | 95 |  |  | 16d | 0d |  |
| 97 | 1.5.1.18 | 双随机 | 3d? | 2017-05-26 | 2017-05-30 | 96 |  |  | 16d | 0d |  |
| 98 | 1.5.1.19 | 与市审改办对接 | 5d? | 2017-05-31 | 2017-06-06 | 97 |  |  | 16d |  |  |
| 99 | 1.5.2 | **频率管理系统** | 38d? | 2017-02-08 A | 2017-03-31 |  | 23% | 29.16d? | 0d |  |  |
| 100 | 1.5.2.1 | **频率划分管理** | 20d? | 2017-02-08 A | 2017-03-07 |  | 50% | 10d? | 18d |  |  |
| 101 | 1.5.2.1.1 | 频率划分图 | 10d? | 2017-02-08 A | 2017-02-21 A |  | 100% |  |  |  | start no earlier than 2017-02-08 |
| 102 | 1.5.2.1.2 | 频率划分对比 | 2d? | 2017-02-22 | 2017-02-23 | 101 |  |  | 0d |  |  |
| 103 | 1.5.2.1.3 | 频率划分数据管理 | 3d? | 2017-02-24 | 2017-02-28 | 102 |  |  | 0d |  |  |
| 104 | 1.5.2.1.4 | 脚注管理 | 5d? | 2017-03-01 | 2017-03-07 | 103 |  |  | 18d |  |  |

| ID | WBS | Task | Duration | Start | Finish | Predecessors | Total slack | Free slack | Constraint |
| --- | --- | --- | --- | --- | --- | --- | --- | --- | --- |
| 105 | 1.5.2.2 | **频率规划管理** | 15d? | 2017-03-01 | 2017-03-21 |  | 0d |  |  |
| 106 | 1.5.2.2.1 | 国家频率规划图 | 3d? | 2017-03-01 | 2017-03-03 | 103 | 0d |  |  |
| 107 | 1.5.2.2.2 | 国家频率规划管理 | 3d? | 2017-03-06 | 2017-03-08 | 106 | 0d |  |  |
| 108 | 1.5.2.2.3 | 上海频率规划图 | 3d? | 2017-03-09 | 2017-03-13 | 107 | 0d |  |  |
| 109 | 1.5.2.2.4 | 上海频率规划管理 | 3d? | 2017-03-14 | 2017-03-16 | 108 | 0d |  |  |
| 110 | 1.5.2.2.5 | 频率指配权限管理 | 3d? | 2017-03-17 | 2017-03-21 | 109 | 0d |  |  |
| 111 | 1.5.2.3 | 频率分配管理 | 3d? | 2017-03-22 | 2017-03-24 | 110 | 0d |  |  |
| 112 | 1.5.2.4 | 频率指配管理 | 2d? | 2017-03-27 | 2017-03-28 | 111 | 0d |  |  |
| 113 | 1.5.2.5 | 频率存储与保护 | 2d? | 2017-03-29 | 2017-03-30 | 112 | 0d |  |  |
| 114 | 1.5.2.6 | 频率批文管理 | 1d? | 2017-03-31 | 2017-03-31 | 113 | 0d |  |  |
| 115 | 1.5.3 | **台站管理系统** | 33d? | 2017-03-06 | 2017-04-19 |  | 18.5d |  |  |
| 116 | 1.5.3.1 | **基础数据维护** | 5d? | 2017-03-06 | 2017-03-10 |  | 18.5d |  |  |
| 117 | 1.5.3.1.1 | 无线电组织机构管理 | 1d? | 2017-03-06 | 2017-03-06 |  | 18.5d | 0d | start no earlier than 2017-03-06 |
| 118 | 1.5.3.1.2 | 申请单位管理 | 1d? | 2017-03-07 | 2017-03-07 | 117 | 18.5d | 0d |  |
| 119 | 1.5.3.1.3 | 无线电通信网络管理 | 1d? | 2017-03-08 | 2017-03-08 | 118 | 18.5d | 0d |  |
| 120 | 1.5.3.1.4 | 无线电设备型号数据管理 | 1d? | 2017-03-09 | 2017-03-09 | 119 | 18.5d | 0d |  |
| 121 | 1.5.3.1.5 | 天馈线数据管理 | 1d? | 2017-03-10 | 2017-03-10 | 120 | 18.5d | 0d |  |
| 122 | 1.5.3.2 | **台站数据管理** | 5d? | 2017-03-13 | 2017-03-17 |  | 18.5d |  |  |
| 123 | 1.5.3.2.1 | 台站数据录入 | 1d? | 2017-03-13 | 2017-03-13 | 121 | 18.5d | 0d |  |
| 124 | 1.5.3.2.2 | 链路管理 | 1d? | 2017-03-14 | 2017-03-14 | 123 | 18.5d | 0d |  |
| 125 | 1.5.3.2.3 | 台站申请变更 | 1d? | 2017-03-15 | 2017-03-15 | 124 | 18.5d | 0d |  |
| 126 | 1.5.3.2.4 | 台站违规数据管理 | 1d? | 2017-03-16 | 2017-03-16 | 125 | 18.5d | 0d |  |
| 127 | 1.5.3.2.5 | 台站封存与报废 | 1d? | 2017-03-17 | 2017-03-17 | 126 | 18.5d | 0d |  |
| 128 | 1.5.3.3 | **台站执照管理** | 7d? | 2017-03-20 | 2017-03-28 |  | 18.5d |  |  |
| 129 | 1.5.3.3.1 | 电台执照导入 | 2d? | 2017-03-20 | 2017-03-21 | 127 | 18.5d | 0d |  |
| 130 | 1.5.3.3.2 | 电台执照审核 | 2d? | 2017-03-22 | 2017-03-23 | 129 | 18.5d | 0d |  |
| 131 | 1.5.3.3.3 | 电台执照统计 | 1d? | 2017-03-24 | 2017-03-24 | 130 | 18.5d | 0d |  |
| 132 | 1.5.3.3.4 | 打印电台执照 | 1d? | 2017-03-27 | 2017-03-27 | 131 | 18.5d | 0d |  |
| 133 | 1.5.3.3.5 | 执照维护 | 1d? | 2017-03-28 | 2017-03-28 | 132 | 18.5d | 0d |  |

| ID | WBS | Task | Duration | Start | Finish | Predecessors | Total slack | Free slack | Constraint |
| --- | --- | --- | --- | --- | --- | --- | --- | --- | --- |
| 134 | 1.5.3.4 | **频率占用费管理** | 7d? | 2017-03-29 | 2017-04-06 |  | 18.5d |  |  |
| 135 | 1.5.3.4.1 | 缴费参数设置及减免比例参数设置 | 1d? | 2017-03-29 | 2017-03-29 | 133 | 18.5d | 0d |  |
| 136 | 1.5.3.4.2 | 台站缴费计算 | 3d? | 2017-03-30 | 2017-04-03 | 135 | 18.5d | 0d |  |
| 137 | 1.5.3.4.3 | 计费审核 | 2d? | 2017-04-04 | 2017-04-05 | 136 | 18.5d | 0d |  |
| 138 | 1.5.3.4.4 | 打印缴费通知单 | 1d? | 2017-04-06 | 2017-04-06 | 137 | 18.5d | 0d |  |
| 139 | 1.5.3.5 | **台站综合查询** | 6d? | 2017-04-07 | 2017-04-14 |  | 18.5d |  |  |
| 140 | 1.5.3.5.1 | 台站数据查询 | 2d? | 2017-04-07 | 2017-04-10 | 138 | 18.5d | 0d |  |
| 141 | 1.5.3.5.2 | 缴费数据查询 | 1d? | 2017-04-11 | 2017-04-11 | 140 | 18.5d | 0d |  |
| 142 | 1.5.3.5.3 | 台站数据统计 | 3d? | 2017-04-12 | 2017-04-14 | 141 | 18.5d | 0d |  |
| 143 | 1.5.3.6 | **到期提醒** | 3d? | 2017-04-17 | 2017-04-19 |  | 18.5d |  |  |
| 144 | 1.5.3.6.1 | 台站过期提醒 | 1d? | 2017-04-17 | 2017-04-17 | 142 | 18.5d | 0d |  |
| 145 | 1.5.3.6.2 | 频率到期提醒 | 1d? | 2017-04-18 | 2017-04-18 | 144 | 18.5d | 0d |  |
| 146 | 1.5.3.6.3 | 费用催缴提醒 | 1d? | 2017-04-19 | 2017-04-19 | 145 | 18.5d | 0d |  |
| 147 | 1.5.4 | 综合业务查询（频率、法人、申请人、申请单位进行综合查询） | 2d? | 2017-04-20 | 2017-04-21 | 146 | 18.5d | 0d |  |
| 148 | 1.5.5 | **特殊台站管理** | 12d? | 2017-04-03 | 2017-04-18 |  | 22.1d |  |  |
| 149 | 1.5.5.1 | **特殊台站申请与判断** | 2.5d? | 2017-04-03 | 2017-04-05 |  | 22.1d |  |  |
| 150 | 1.5.5.1.1 | 特殊台站受理预审 | 0.5d? | 2017-04-03 | 2017-04-03 |  | 22.1d | 0d | start no earlier than 2017-04-03 |
| 151 | 1.5.5.1.2 | 特殊台站判定条件设定 | 0.5d? | 2017-04-03 | 2017-04-03 | 150 | 22.1d | 0d |  |
| 152 | 1.5.5.1.3 | 特殊台站判定 | 0.5d? | 2017-04-04 | 2017-04-04 | 151 | 22.1d | 0d |  |
| 153 | 1.5.5.1.4 | 电磁环境评估 | 0.5d? | 2017-04-04 | 2017-04-04 | 152 | 22.1d | 0d |  |
| 154 | 1.5.5.1.5 | 相关单位征询 | 0.5d? | 2017-04-05 | 2017-04-05 | 153 | 22.1d | 0d |  |
| 155 | 1.5.5.2 | **特殊台站资料管理(新增、修改、删除)** | 2d? | 2017-04-05 | 2017-04-07 |  | 22.1d |  |  |
| 156 | 1.5.5.2.1 | 基本信息 | 0.5d? | 2017-04-05 | 2017-04-05 | 154 | 22.1d | 0d |  |
| 157 | 1.5.5.2.2 | 业务信息 | 0.5d? | 2017-04-06 | 2017-04-06 | 156 | 22.1d | 0d |  |
| 158 | 1.5.5.2.3 | 环境信息 | 0.5d? | 2017-04-06 | 2017-04-06 | 157 | 22.1d | 0d |  |
| 159 | 1.5.5.2.4 | 管理信息 | 0.5d? | 2017-04-07 | 2017-04-07 | 158 | 22.1d | 0d |  |

| ID | WBS | Task | Duration | Start | Finish | Predecessors | Total slack | Free slack | Constraint |
| --- | --- | --- | --- | --- | --- | --- | --- | --- | --- |
| 160 | 1.5.5.3 | **特殊台站业务管理** | 2d? | 2017-04-07 | 2017-04-11 |  | 22.1d |  |  |
| 161 | 1.5.5.3.1 | 特殊台站资料比对 | 1d? | 2017-04-07 | 2017-04-10 | 159 | 22.1d | 0d |  |
| 162 | 1.5.5.3.2 | 特殊台站类型管理 | 0.5d? | 2017-04-10 | 2017-04-10 | 161 | 22.1d | 0d |  |
| 163 | 1.5.5.3.3 | 保护距离设置功能 | 0.5d? | 2017-04-11 | 2017-04-11 | 162 | 22.1d | 0d |  |
| 164 | 1.5.5.4 | **地理信息功能** | 2.5d? | 2017-04-11 | 2017-04-13 |  | 22.1d |  |  |
| 165 | 1.5.5.4.1 | 地理信息嵌入 | 1d? | 2017-04-11 | 2017-04-12 | 163 | 22.1d | 0d |  |
| 166 | 1.5.5.4.2 | 特殊台站搜索显示 | 0.5d? | 2017-04-12 | 2017-04-12 | 165 | 22.1d | 0d |  |
| 167 | 1.5.5.4.3 | 特殊台站资料显示 | 0.5d? | 2017-04-13 | 2017-04-13 | 166 | 22.1d | 0d |  |
| 168 | 1.5.5.4.4 | 特殊台站保护区域显示和保护距离线(地图功能) | 0.5d? | 2017-04-13 | 2017-04-13 | 167 | 22.1d | 0d |  |
| 169 | 1.5.5.5 | 特殊台站限制保护管理 | 1d? | 2017-04-14 | 2017-04-14 | 168 | 22.1d | 0d |  |
| 170 | 1.5.5.6 | 特殊台站电磁环境数据管理 | 1d? | 2017-04-17 | 2017-04-17 | 169 | 22.1d | 0d |  |
| 171 | 1.5.5.7 | 特殊台站的法规、政策和技术标准管理 | 1d? | 2017-04-18 | 2017-04-18 | 170 | 22.1d | 0d |  |
| 172 | 1.5.6 | **业余电台管理系统** | 5d? | 2017-04-24 | 2017-04-28 |  | 18.5d |  |  |
| 173 | 1.5.6.1 | 业余无线电中继台布局 | 1d? | 2017-04-24 | 2017-04-24 | 147 | 18.5d | 0d |  |
| 174 | 1.5.6.2 | 业余电台执照管理 | 0.5d? | 2017-04-25 | 2017-04-25 | 173 | 18.5d | 0d |  |
| 175 | 1.5.6.3 | 业余电台呼号管理 | 0.5d? | 2017-04-25 | 2017-04-25 | 174 | 18.5d | 0d |  |
| 176 | 1.5.6.4 | 业余电台呼号设置 | 0.5d? | 2017-04-26 | 2017-04-26 | 175 | 18.5d | 0d |  |
| 177 | 1.5.6.5 | 业余电台操作证管理 | 0.5d? | 2017-04-26 | 2017-04-26 | 176 | 18.5d | 0d |  |
| 178 | 1.5.6.6 | 业余电台综合查询 | 1d? | 2017-04-27 | 2017-04-27 | 177 | 18.5d | 0d |  |
| 179 | 1.5.6.7 | 业余电台数据统计 | 1d? | 2017-04-28 | 2017-04-28 | 178 | 18.5d | 0d |  |
| 180 | 1.5.7 | **公用移动通信基站布局规划** | 24.5d? | 2017-05-01 | 2017-06-02 |  | 18.5d |  |  |
| 181 | 1.5.7.1 | **布局规划管理** | 5d? | 2017-05-01 | 2017-05-05 |  | 18.5d |  |  |
| 182 | 1.5.7.1.1 | 导入修编规划 | 2d? | 2017-05-01 | 2017-05-02 | 179 | 18.5d | 0d | start no earlier than 2017-03-13 |
| 183 | 1.5.7.1.2 | 布局规划查询 | 2d? | 2017-05-03 | 2017-05-04 | 182 | 18.5d | 0d |  |
| 184 | 1.5.7.1.3 | 布局规划统计 | 1d? | 2017-05-05 | 2017-05-05 | 183 | 18.5d | 0d |  |

| ID | WBS | Task | Duration | Start | Finish | Predecessors | Total slack | Free slack |
| --- | --- | --- | --- | --- | --- | --- | --- | --- |
| 185 | 1.5.7.2 | **年度计划管理** | 3d? | 2017-05-08 | 2017-05-10 |  | 18.5d |  |
| 186 | 1.5.7.2.1 | 年计划导入、查询和汇总 | 0.5d? | 2017-05-08 | 2017-05-08 | 184 | 18.5d | 0d |
| 187 | 1.5.7.2.2 | 年度计划成果 | 0.5d? | 2017-05-08 | 2017-05-08 | 186 | 18.5d | 0d |
| 188 | 1.5.7.2.3 | 年度计划分发和审查 | 1d? | 2017-05-09 | 2017-05-09 | 187 | 18.5d | 0d |
| 189 | 1.5.7.2.4 | 执行情况统计 | 0.5d? | 2017-05-10 | 2017-05-10 | 188 | 18.5d | 0d |
| 190 | 1.5.7.2.5 | 年计划名录 | 0.5d? | 2017-05-10 | 2017-05-10 | 189 | 18.5d | 0d |
| 191 | 1.5.7.3 | **室外宏基站站址认定管理** | 3.5d? | 2017-05-11 | 2017-05-16 |  | 18.5d |  |
| 192 | 1.5.7.3.1 | 站址认定导入、查询和审核 | 1d? | 2017-05-11 | 2017-05-11 | 190 | 18.5d | 0d |
| 193 | 1.5.7.3.2 | 分发站址认定 | 1d? | 2017-05-12 | 2017-05-12 | 192 | 18.5d | 0d |
| 194 | 1.5.7.3.3 | 意见征询 | 0.5d? | 2017-05-15 | 2017-05-15 | 193 | 18.5d | 0d |
| 195 | 1.5.7.3.4 | 同址快速审核 | 0.5d? | 2017-05-15 | 2017-05-15 | 194 | 18.5d | 0d |
| 196 | 1.5.7.3.5 | 站点认定书打印 | 0.5d? | 2017-05-16 | 2017-05-16 | 195 | 18.5d | 0d |
| 197 | 1.5.7.4 | **室外分布系统** | 2.5d? | 2017-05-16 | 2017-05-18 |  | 18.5d |  |
| 198 | 1.5.7.4.1 | 月度计划导入 | 0.5d? | 2017-05-16 | 2017-05-16 | 196 | 18.5d | 0d |
| 199 | 1.5.7.4.2 | 审核室内计划 | 0.5d? | 2017-05-17 | 2017-05-17 | 198 | 18.5d | 0d |
| 200 | 1.5.7.4.3 | 室内计划总表 | 0.5d? | 2017-05-17 | 2017-05-17 | 199 | 18.5d | 0d |
| 201 | 1.5.7.4.4 | 生成计划名录 | 0.5d? | 2017-05-18 | 2017-05-18 | 200 | 18.5d | 0d |
| 202 | 1.5.7.4.5 | 室内分布查询 | 0.5d? | 2017-05-18 | 2017-05-18 | 201 | 18.5d | 0d |
| 203 | 1.5.7.5 | **查询统计** | 5.5d? | 2017-05-19 | 2017-05-26 |  | 18.5d |  |
| 204 | 1.5.7.5.1 | 基站分类统计和站址共建统计 | 0.5d? | 2017-05-19 | 2017-05-19 | 202 | 18.5d | 0d |
| 205 | 1.5.7.5.2 | 基站审批统计和制式统计 | 1d? | 2017-05-19 | 2017-05-22 | 204 | 18.5d | 0d |
| 206 | 1.5.7.5.3 | 投诉查询 | 0.5d? | 2017-05-22 | 2017-05-22 | 205 | 18.5d | 0d |
| 207 | 1.5.7.5.4 | 同比环比统计和分析报告 | 1d? | 2017-05-23 | 2017-05-23 | 206 | 18.5d | 0d |
| 208 | 1.5.7.5.5 | 分析报告 | 2d? | 2017-05-24 | 2017-05-25 | 207 | 18.5d | 0d |
| 209 | 1.5.7.5.6 | 区县预审查询 | 0.5d? | 2017-05-26 | 2017-05-26 | 208 | 18.5d | 0d |

| ID | WBS | Task | Duration | Start | Finish | Predecessors | Total slack | Free slack |
| --- | --- | --- | --- | --- | --- | --- | --- | --- |
| 210 | 1.5.7.6 | **日常管理** | 2d? | 2017-05-26 | 2017-05-30 |  | 18.5d |  |
| 211 | 1.5.7.6.1 | 法律法规 | 0.5d? | 2017-05-26 | 2017-05-26 | 209 | 18.5d | 0d |
| 212 | 1.5.7.6.2 | 投诉管理 | 0.5d? | 2017-05-29 | 2017-05-29 | 211 | 18.5d | 0d |
| 213 | 1.5.7.6.3 | 文件管理 | 0.5d? | 2017-05-29 | 2017-05-29 | 212 | 18.5d | 0d |
| 214 | 1.5.7.6.4 | 附件管理 | 0.5d? | 2017-05-30 | 2017-05-30 | 213 | 18.5d | 0d |
| 215 | 1.5.7.7 | 验收数据导入和业务设置敏感类型 | 3d? | 2017-05-30 | 2017-06-02 | 214 | 18.5d | 0d |
| 216 | 1.5.8 | **频率指配业务审批管理** | 0.99d? | 2017-04-19 | 2017-04-19 |  | 22.1d |  |
| 217 | 1.5.8.1 | 新办 | 0.33d? | 2017-04-19 | 2017-04-19 | 171 | 22.1d | 0d |
| 218 | 1.5.8.2 | 延续 | 0.33d? | 2017-04-19 | 2017-04-19 | 217 | 22.1d | 0d |
| 219 | 1.5.8.3 | 注销 | 0.33d? | 2017-04-19 | 2017-04-19 | 218 | 22.1d | 0d |
| 220 | 1.5.9 | **无线电台站设置审批** | 0.99d? | 2017-04-19 | 2017-04-20 |  | 22.1d |  |
| 221 | 1.5.9.1 | 新办 | 0.33d? | 2017-04-19 | 2017-04-20 | 219 | 22.1d | 0d |
| 222 | 1.5.9.2 | 延续 | 0.33d? | 2017-04-20 | 2017-04-20 | 221 | 22.1d | 0d |
| 223 | 1.5.9.3 | 注销 | 0.33d? | 2017-04-20 | 2017-04-20 | 222 | 22.1d | 0d |
| 224 | 1.5.10 | 无线电发射设备进关审批 | 1d? | 2017-04-20 | 2017-04-21 | 223 | 22.1d | 0d |
| 225 | 1.5.11 | **业余无线电台站审批** | 2d? | 2017-04-21 | 2017-04-25 |  | 22.1d |  |
| 226 | 1.5.11.1 | 业余无线电台新办和注销 | 1d? | 2017-04-21 | 2017-04-24 | 224 | 22.1d | 0d |
| 227 | 1.5.11.2 | 呼号申请 | 0.5d? | 2017-04-24 | 2017-04-25 | 226 | 22.1d | 0d |
| 228 | 1.5.11.3 | 执照管理 | 0.5d? | 2017-04-25 | 2017-04-25 | 227 | 22.1d | 0d |
| 229 | 1.5.12 | **频率、台站不定期管理** | 1d? | 2017-04-25 | 2017-04-26 |  | 22.1d |  |
| 230 | 1.5.12.1 | 监测任务管理 | 0.5d? | 2017-04-25 | 2017-04-26 | 228 | 22.1d | 0d |
| 231 | 1.5.12.2 | 检测任务管理 | 0.5d? | 2017-04-26 | 2017-04-26 | 230 | 22.1d | 0d |
| 232 | 1.5.13 | **统计与查询** | 1d? | 2017-04-26 | 2017-04-27 |  | 22.1d |  |
| 233 | 1.5.13.1 | 查询 | 0.5d? | 2017-04-26 | 2017-04-27 | 231 | 22.1d | 0d |
| 234 | 1.5.13.2 | 统计 | 0.5d? | 2017-04-27 | 2017-04-27 | 233 | 22.1d | 0d |

| ID | WBS | Task | Duration | Start | Finish | Predecessors | Total slack | Free slack |
| --- | --- | --- | --- | --- | --- | --- | --- | --- |
| 235 | 1.5.14 | **信访投诉** | 2.1d? | 2017-04-27 | 2017-05-02 |  | 22.1d |  |
| 236 | 1.5.14.1 | 信访台帐 | 0.2d? | 2017-04-27 | 2017-04-28 | 234 | 22.1d | 0d |
| 237 | 1.5.14.2 | 投诉受理 | 0.2d? | 2017-04-28 | 2017-04-28 | 236 | 22.1d | 0d |
| 238 | 1.5.14.3 | 任务派发 | 0.5d? | 2017-04-28 | 2017-04-28 | 237 | 22.1d | 0d |
| 239 | 1.5.14.4 | 结果维护 | 0.2d? | 2017-04-28 | 2017-05-01 | 238 | 22.1d | 0d |
| 240 | 1.5.14.5 | 查询统计 | 1d? | 2017-05-01 | 2017-05-02 | 239 | 22.1d | 0d |
| 241 | 1.5.15 | **查询执法** | 2d? | 2017-05-02 | 2017-05-04 |  | 22.1d |  |
| 242 | 1.5.15.1 | 执法任务记录 | 0.5d? | 2017-05-02 | 2017-05-02 | 240 | 22.1d | 0d |
| 243 | 1.5.15.2 | 执法任务接收 | 1d? | 2017-05-02 | 2017-05-03 | 242 | 22.1d | 0d |
| 244 | 1.5.15.3 | 执法任务处理 | 0.5d? | 2017-05-03 | 2017-05-04 | 243 | 22.1d | 0d |
| 245 | 1.5.16 | **联合执法管理** | 2d? | 2017-05-04 | 2017-05-08 |  | 22.1d |  |
| 246 | 1.5.16.1 | 方案管理 | 0.5d? | 2017-05-04 | 2017-05-04 | 244 | 22.1d | 0d |
| 247 | 1.5.16.2 | 任务分配 | 0.5d? | 2017-05-04 | 2017-05-05 | 246 | 22.1d | 0d |
| 248 | 1.5.16.3 | 结果维护 | 1d? | 2017-05-05 | 2017-05-08 | 247 | 22.1d | 0d |
| 249 | 1.5.17 | **无线电用户信用管理** | 2d? | 2017-05-08 | 2017-05-10 |  | 22.1d |  |
| 250 | 1.5.17.1 | 法人信息查询 | 0.5d? | 2017-05-08 | 2017-05-08 | 248 | 6.1d | 0d |
| 251 | 1.5.17.2 | 信用查询 | 0.5d? | 2017-05-08 | 2017-05-09 | 250 | 6.1d | 0d |
| 252 | 1.5.17.3 | 信用上报 | 0.5d? | 2017-05-09 | 2017-05-09 | 251 | 6.1d | 0d |
| 253 | 1.5.17.4 | 信用记录 | 0.5d? | 2017-05-09 | 2017-05-10 | 252 | 6.1d | 0d |
| 254 | 1.5.18 | **干扰管理** | 0.99d? | 2017-05-10 | 2017-05-11 |  | 22.1d |  |
| 255 | 1.5.18.1 | 受理登记 | 0.33d? | 2017-05-10 | 2017-05-10 | 253 | 6.1d | 0d |
| 256 | 1.5.18.2 | 任务派发 | 0.33d? | 2017-05-10 | 2017-05-10 | 255 | 6.1d | 0d |
| 257 | 1.5.18.3 | 结果维护 | 0.33d? | 2017-05-10 | 2017-05-11 | 256 | 6.1d | 0d |
| 258 | 1.5.19 | **监测任务管理** | 1d? | 2017-05-11 | 2017-05-12 |  | 22.1d |  |
| 259 | 1.5.19.1 | 任务下发 | 0.5d? | 2017-05-11 | 2017-05-11 | 257 | 6.1d | 0d |
| 260 | 1.5.19.2 | 执行结果查询 | 0.5d? | 2017-05-11 | 2017-05-12 | 259 | 6.1d | 0d |

| ID | WBS | Task | Type | Duration | Start | Finish | Predecessors | Total slack | Free slack |
| --- | --- | --- | --- | --- | --- | --- | --- | --- | --- |
| 261 | 1.5.20 | **检测任务管理** |  | 4d? | 2017-05-12 | 2017-05-18 |  | 22.1d |  |
| 262 | 1.5.20.1 | 任务下发 |  | 0.5d? | 2017-05-12 | 2017-05-12 | 260 | 22.1d | 0d |
| 263 | 1.5.20.2 | 任务接收 |  | 0.5d? | 2017-05-12 | 2017-05-15 | 262 | 22.1d | 0d |
| 264 | 1.5.20.3 | 任务查询 |  | 1d? | 2017-05-15 | 2017-05-16 | 263 | 22.1d | 0d |
| 265 | 1.5.20.4 | 任务处理 |  | 1d? | 2017-05-16 | 2017-05-17 | 264 | 22.1d | 0d |
| 266 | 1.5.20.5 | 报告管理 |  | 1d? | 2017-05-17 | 2017-05-18 | 265 | 22.1d | 0d |
| 267 | 1.5.21 | 内部任务事项管理 |  | 1d? | 2017-05-18 | 2017-05-19 | 266 | 22.1d | 0d |
| 268 | 1.5.22 | **电磁兼容分析** |  | 5d? | 2017-05-19 | 2017-05-26 |  | 22.1d |  |
| 269 | 1.5.22.1 | 区域分析 |  | 3d? | 2017-05-19 | 2017-05-24 | 267 | 22.1d | 0d |
| 270 | 1.5.22.2 | 频率指配EMC分析 |  | 2d? | 2017-05-24 | 2017-05-26 | 269 | 22.1d | 0d |
| 271 | 1.5.23 | **活动保障管理** |  | 1.83d? | 2017-05-26 | 2017-05-29 |  | 22.1d |  |
| 272 | 1.5.23.1 | 活动保障方案管理 |  | 1d? | 2017-05-26 | 2017-05-29 | 270 | 6.1d | 0d |
| 273 | 1.5.23.2 | 任务分配 |  | 0.33d? | 2017-05-29 | 2017-05-29 | 272 | 6.1d | 0d |
| 274 | 1.5.23.3 | 结果记录 |  | 0.5d? | 2017-05-29 | 2017-05-29 | 273 | 6.1d |  |
| 275 | 1.5.24 | 完成核心业务管理系统开发 | milestone | 0d? | 2017-06-02 | 2017-06-02 | 215 | 18.5d |  |
| 276 | 1.6 | **统一信息展示系统** |  | 34d? | 2017-03-31 | 2017-05-17 |  | 30d |  |
| 277 | 1.6.1 | **统一展示布局** |  | 2d? | 2017-03-31 | 2017-04-03 |  | 30d |  |
| 278 | 1.6.1.1 | 导航栏 |  | 0.5d? | 2017-03-31 | 2017-03-31 | 113 | 30d | 0d |
| 279 | 1.6.1.2 | 侧边快捷展示 |  | 0.5d? | 2017-03-31 | 2017-03-31 | 278 | 30d | 0d |
| 280 | 1.6.1.3 | 地理信息展示 |  | 0.5d? | 2017-04-03 | 2017-04-03 | 279 | 30d | 0d |
| 281 | 1.6.1.4 | 统计报表 |  | 0.5d? | 2017-04-03 | 2017-04-03 | 280 | 30d | 0d |
| 282 | 1.6.2 | 信息整合 |  | 5d? | 2017-04-04 | 2017-04-10 | 281 | 30d | 0d |
| 283 | 1.6.3 | **信息展示** |  | 22d? | 2017-04-11 | 2017-05-10 |  | 30d |  |
| 284 | 1.6.3.1 | 行政办公综合展示 |  | 3d? | 2017-04-11 | 2017-04-13 | 282 | 30d | 0d |
| 285 | 1.6.3.2 | 频率信息综合展示 |  | 3d | 2017-04-14 | 2017-04-18 | 284 | 30d | 0d |
| 286 | 1.6.3.3 | 台站信息综合展示 |  | 3d | 2017-04-19 | 2017-04-21 | 285 | 30d | 0d |
| 287 | 1.6.3.4 | 监督协调综合展示 |  | 2d | 2017-04-24 | 2017-04-25 | 286 | 30d | 0d |
| 288 | 1.6.3.5 | 分行业统计台站信息 |  | 2d | 2017-04-26 | 2017-04-27 | 287 | 30d | 0d |
| 289 | 1.6.3.6 | 审批信息综合展示 |  | 2d | 2017-04-28 | 2017-05-01 | 288 | 30d | 0d |
| 290 | 1.6.3.7 | 频占费收缴信息 |  | 2d | 2017-05-02 | 2017-05-03 | 289 | 30d | 0d |
| 291 | 1.6.3.8 | 投诉、信访、诚信信息综合展示 |  | 2d | 2017-05-04 | 2017-05-05 | 290 | 30d | 0d |
| 292 | 1.6.3.9 | 活动保障信息/事项处理综合展示 |  | 3d | 2017-05-08 | 2017-05-10 | 291 | 30d | 0d |
| 293 | 1.6.4 | 展示内容管理 |  | 4d | 2017-05-11 | 2017-05-16 | 292 | 30d | 0d |
| 294 | 1.6.5 | 完成综合展示系统开发 |  | 1d? | 2017-05-17 | 2017-05-17 | 293 | 30d |  |

| ID | WBS | Task | Type | Duration | Start | Finish | Predecessors | Total slack | Free slack | Constraint |
| --- | --- | --- | --- | --- | --- | --- | --- | --- | --- | --- |
| 295 | 1.7 | **移动信息系统** |  | 28d? | 2017-03-27 | 2017-05-03 |  | 40d |  |  |
| 296 | 1.7.1 | **移动办公** |  | 16d? | 2017-03-27 | 2017-04-17 |  | 40d |  |  |
| 297 | 1.7.1.1 | 用户登录 |  | 2d? | 2017-03-27 | 2017-03-28 |  | 40d | 0d | start no earlier than 2017-03-27 |
| 298 | 1.7.1.2 | 门户网站 |  | 2d | 2017-03-29 | 2017-03-30 | 297 | 40d | 0d |  |
| 299 | 1.7.1.3 | 电子信息发布 |  | 2d | 2017-03-31 | 2017-04-03 | 298 | 40d | 0d |  |
| 300 | 1.7.1.4 | 邮箱、通信录 |  | 2d | 2017-04-04 | 2017-04-05 | 299 | 40d | 0d |  |
| 301 | 1.7.1.5 | 公文管理 |  | 2d | 2017-04-06 | 2017-04-07 | 300 | 40d | 0d |  |
| 302 | 1.7.1.6 | 移动审批 |  | 2d | 2017-04-10 | 2017-04-11 | 301 | 40d | 0d |  |
| 303 | 1.7.1.7 | 工作统计 |  | 2d | 2017-04-12 | 2017-04-13 | 302 | 40d | 0d |  |
| 304 | 1.7.1.8 | 值班安排 |  | 2d | 2017-04-14 | 2017-04-17 | 303 | 40d | 0d |  |
| 305 | 1.7.2 | **移动执法** |  | 6d | 2017-04-18 | 2017-04-25 |  | 40d |  |  |
| 306 | 1.7.2.1 | 任务接收和查看 |  | 2d | 2017-04-18 | 2017-04-19 | 304 | 40d | 0d |  |
| 307 | 1.7.2.2 | 信息查询 |  | 2d | 2017-04-20 | 2017-04-21 | 306 | 40d | 0d |  |
| 308 | 1.7.2.3 | 路线规划 |  | 2d | 2017-04-24 | 2017-04-25 | 307 | 40d | 0d |  |
| 309 | 1.7.3 | **移动检查** |  | 4d | 2017-04-26 | 2017-05-01 |  | 40d |  |  |
| 310 | 1.7.3.1 | 信息查询 |  | 2d | 2017-04-26 | 2017-04-27 | 308 | 40d | 0d |  |
| 311 | 1.7.3.2 | 路线规划 |  | 2d | 2017-04-28 | 2017-05-01 | 310 | 40d | 0d |  |
| 312 | 1.7.4 | 后台管理 |  | 2d | 2017-05-02 | 2017-05-03 | 311 | 40d | 0d |  |
| 313 | 1.7.5 | 完成移动信息系统开发 | milestone | 0d | 2017-05-03 | 2017-05-03 | 312 | 40d |  |  |
| 314 | 1.8 | **综合监测系统** |  | 743d? | 2014-07-09 | 2017-05-12 |  | 33d |  |  |
| 315 | 1.8.1 | 监测数据共享* |  | 1d? | 2017-03-27 | 2017-03-27 |  | 33d | 0d | start no earlier than 2017-03-27 |
| 316 | 1.8.2 | **监测任务管理** |  | 8d | 2017-03-28 | 2017-04-06 |  | 33d |  |  |
| 317 | 1.8.2.1 | 监测任务接受 |  | 2d | 2017-03-28 | 2017-03-29 | 315 | 33d | 0d |  |
| 318 | 1.8.2.2 | 监测任务处理 |  | 2d | 2017-03-30 | 2017-03-31 | 317 | 33d | 0d |  |
| 319 | 1.8.2.3 | 监测结果反馈 |  | 2d | 2017-04-03 | 2017-04-04 | 318 | 33d | 0d |  |
| 320 | 1.8.2.4 | 监测任务查询 |  | 2d | 2017-04-05 | 2017-04-06 | 319 | 33d | 0d |  |
| 321 | 1.8.3 | 自动化监测评估* |  | 2d | 2017-04-07 | 2017-04-10 | 320 | 33d | 0d |  |
| 322 | 1.8.4 | 区域动态监测分析* |  | 3d | 2017-04-11 | 2017-04-13 | 321 | 33d | 0d |  |
| 323 | 1.8.5 | 台站环境监测 |  | 3d | 2017-04-14 | 2017-04-18 | 322 | 33d | 0d |  |

| ID | WBS | Task | Type | Duration | Start | Finish | Predecessors | Remaining | Total slack | Free slack | Constraint | Resources | Work |
| --- | --- | --- | --- | --- | --- | --- | --- | --- | --- | --- | --- | --- | --- |
| 324 | 1.8.6 | **监测数据分析*** |  | 18d | 2017-04-19 | 2017-05-12 |  |  | 33d |  |  |  |  |
| 325 | 1.8.6.1 | 频道占用度分析 |  | 3d | 2017-04-19 | 2017-04-21 | 323 |  | 33d | 0d |  |  |  |
| 326 | 1.8.6.2 | 频段占用度分析 |  | 3d | 2017-04-24 | 2017-04-26 | 325 |  | 33d | 0d |  |  |  |
| 327 | 1.8.6.3 | 信号瀑布图分析 |  | 3d | 2017-04-27 | 2017-05-01 | 326 |  | 33d | 0d |  |  |  |
| 328 | 1.8.6.4 | 信号频谱分析 |  | 3d | 2017-05-02 | 2017-05-04 | 327 |  | 33d | 0d |  |  |  |
| 329 | 1.8.6.5 | 电平分布分析 |  | 3d | 2017-05-05 | 2017-05-09 | 328 |  | 33d | 0d |  |  |  |
| 330 | 1.8.6.6 | 监测月报生成 |  | 3d | 2017-05-10 | 2017-05-12 | 329 |  | 33d |  |  |  |  |
| 331 | 1.8.7 | 完成综合监测系统开发 | milestone | 0d | 2014-07-09 | 2014-07-09 |  |  | 776d |  |  |  |  |
| 332 | 1.9 | **地理信息开发** |  | 77d? | 2017-02-20 A | 2017-06-06 |  | 77d? | 16d |  |  |  | 40h |
| 333 | 1.9.1 | 地理信息功能需求分析 |  | 5d? | 2017-02-20 A | 2017-02-24 |  | 5d? | 88d |  |  | 陈伟明 | 40h |
| 334 | 1.9.2 | 地理信息系统接口设计 |  | 5d? | 2017-03-13 | 2017-03-17 |  |  | 40d | 0d | start no earlier than 2017-03-13 |  |  |
| 335 | 1.9.3 | 台站数据展示 |  | 3d? | 2017-03-20 | 2017-03-22 | 334 |  | 40d | 0d |  |  |  |
| 336 | 1.9.4 | 监测站信息展示 |  | 2d? | 2017-03-23 | 2017-03-24 | 335 |  | 68d |  |  |  |  |
| 337 | 1.9.5 | 其他地理信息相关开发 |  | 30d? | 2017-03-23 | 2017-05-03 | 335 |  | 40d |  |  |  |  |
| 338 | 1.9.6 | 完成地理信息开发 | milestone | 0d | 2017-06-06 | 2017-06-06 | 78 |  | 16d |  |  |  |  |
| 339 | 1.10 | 系统内部测试修改 |  | 60d? | 2017-03-20 | 2017-06-09 | 99FS-10d |  | 13d |  | start no earlier than 2015-06-25 |  |  |
| 340 | 1.11 | 分阶段试运行 |  | 50d? | 2017-04-06 | 2017-06-14 | 99FS+3d |  | 0d |  |  |  |  |
| 341 | 1.12 | 系统安装部署 |  | 5d? | 2017-06-15 | 2017-06-21 | 340 |  | 0d |  | start no earlier than 2015-06-29 |  |  |
| 342 | 1.13 | 系统培训 |  | 2d? | 2017-06-22 | 2017-06-23 | 341 |  | 0d |  |  |  |  |
| 343 | 1.14 | 系统交付 |  | 3d | 2017-06-26 | 2017-06-28 | 342 |  | 0d |  |  |  |  |
| 345 | 1.15 | *：功能待定 |  | 1d? | 2014-07-09 | 2014-07-09 |  |  | 775d |  |  |  |  |
